# planification_initiale_definitive

Schedule from MS Project, 2008-09-09 to 2009-05-29, scheduled back from the finish, 7 hours a day, A marks actual dates.

## Calendars

- Standard: Mon-Fri 19:00-20:00; Sat-Sun 15:00-17:00. Exceptions (off unless hours are given): 2008-10-20 to 2008-10-24 09:00-12:00, 13:30-17:30 (Semaine bloquée 1, recurring), 2008-12-15 to 2008-12-18 09:00-12:00, 13:30-17:30 (Semaine bloquée 2, recurring), 2008-12-20 to 2009-01-04 (Vacances Noël), 2009-01-12 to 2009-01-16 (Partiels de Janvier), 2009-02-15 to 2009-02-22 (Vacances d'hiver), 2009-03-06 to 2009-03-08 (Salon du CeBIT), 2009-04-05 to 2009-04-12 (Vacances de Pâques (semaine 1)), 2009-04-13 to 2009-04-19 16:00-19:00 (Vacances de Pâques (semaine 2), recurring), 2009-05-11 to 2009-05-15 (Partiels de Mai), 2009-05-18 to 2009-05-22 09:00-12:00, 13:30-17:30 (Semaine bloquée 3, recurring), 2009-05-25 to 2009-05-28 09:00-12:00, 13:30-17:30 (Semaine bloquée 4, recurring).

## Resources

| Resource |
| --- |
| Chef de projet |
| Equipe |
| LE SQUER Nicolas |
| GAUTIER Quentin |
| MUSSET Nicolas |
| VILLOING Xavier |
| GARCIA Paul |
| CHAUDET Yoann |

## Schedule

| ID | WBS | Task | Type | Duration | Start | Finish | Predecessors | Complete | Remaining | Baseline start | Baseline finish | Baseline duration | Total slack | Free slack | Constraint | Resources | Work |
| --- | --- | --- | --- | --- | --- | --- | --- | --- | --- | --- | --- | --- | --- | --- | --- | --- | --- |
| 1 | 1 | **Projet Monofin** |  | 73d? | 2008-09-09 A | 2009-05-29 |  |  | 73d? | 2008-09-09 | 2009-05-29 | 73d? | 0d |  | as late as possible |  | 1908h |
| 2 | 1.1 | **Analyse** |  | 20.14d? | 2008-09-09 A | 2008-12-05 |  |  | 20.14d? | 2008-09-09 | 2008-12-05 | 20.14d? | 0d |  | as late as possible |  | 390h |
| 3 | 1.1.1 | Présentation des projets | milestone | 0d | 2008-09-09 A | 2008-09-09 A |  | 100% |  | 2008-09-09 | 2008-09-09 | 0d |  |  | must start on 2008-09-09 |  |  |
| 4 | 1.1.2 | Choix du projet | milestone | 0d | 2008-09-11 A | 2008-09-11 A |  | 100% |  | 2008-09-11 | 2008-09-11 | 0d |  |  | must start on 2008-09-11 |  |  |
| 5 | 1.1.3 | Début des projets | milestone | 0d? | 2008-09-15 | 2008-09-15 |  |  |  | 2008-09-15 | 2008-09-15 | 0d? | 0d |  | finish no later than 2008-09-15 |  |  |
| 6 | 1.1.4 | **Spécification générale** |  | 11.43d? | 2008-09-15 | 2008-10-24 | 5 |  |  | 2008-09-15 | 2008-10-24 | 11.43d? | 0d |  | as late as possible |  | 150h |
| 7 | 1.1.4.1 | Spécification |  | 3.57d? | 2008-09-15 | 2008-10-04 |  |  |  | 2008-09-15 | 2008-10-04 | 3.57d? | 6.86d |  |  | Equipe [600%] | 150h |
| 8 | 1.1.4.2 | Rapport d'analyse - encadreur | milestone | 0d | 2008-10-21 | 2008-10-21 |  |  |  | 2008-10-21 | 2008-10-21 | 0d | 0d |  | must start on 2008-10-21 |  |  |
| 9 | 1.1.4.3 | Rapport d'analyse - rapporteur | milestone | 0d | 2008-10-24 | 2008-10-24 | 7 |  |  | 2008-10-24 | 2008-10-24 | 0d | 0d |  | must start on 2008-10-24 |  |  |
| 10 | 1.1.5 | **Spécifications fonctionnelles** |  | 7.57d? | 2008-10-25 | 2008-12-05 | 6 |  |  | 2008-10-25 | 2008-12-05 | 7.57d? | 0d |  | as late as possible |  | 240h |
| 11 | 1.1.5.1 | **Spécification** |  | 5.71d? | 2008-10-25 | 2008-11-23 |  |  |  | 2008-10-25 | 2008-11-23 | 5.71d? | 0d |  | as late as possible |  | 200h |
| 12 | 1.1.5.1.1 | Interface graphique |  | 5.71d? | 2008-10-25 | 2008-11-23 |  |  |  | 2008-10-25 | 2008-11-23 | 5.71d? | 1.86d |  |  | Equipe [300%] | 120h |
| 13 | 1.1.5.1.2 | Interface avec COMSOL |  | 5.71d? | 2008-10-25 | 2008-11-23 |  |  |  | 2008-10-25 | 2008-11-23 | 5.71d? | 1.86d |  |  | Equipe [200%] | 80h |
| 14 | 1.1.5.2 | Réalisation d'un prototype |  | 5.71d? | 2008-10-25 | 2008-11-23 |  |  |  | 2008-10-25 | 2008-11-23 | 5.71d? | 1.86d |  |  | Equipe | 40h |
| 15 | 1.1.5.3 | Rapport spécifications - encadreur | milestone | 0d | 2008-11-27 | 2008-11-27 |  |  |  | 2008-11-27 | 2008-11-27 | 0d | 0d |  | must start on 2008-11-27 |  |  |
| 16 | 1.1.5.4 | Rapport spécifications - rapporteur | milestone | 0d | 2008-12-05 | 2008-12-05 | 14, 11 |  |  | 2008-12-05 | 2008-12-05 | 0d | 0d |  | must start on 2008-12-05 |  |  |
| 17 | 1.2 | **Conception** |  | 18d? | 2008-12-05 | 2009-02-13 | 10 |  |  | 2008-12-05 | 2009-02-13 | 18d? | 0d |  | as late as possible |  | 580h |
| 18 | 1.2.1 | **Planification initiale** |  | 4d? | 2008-12-05 | 2008-12-17 |  |  |  | 2008-12-05 | 2008-12-17 | 4d? | 0d |  | as late as possible |  | 40h |
| 19 | 1.2.1.1 | Planification |  | 0.95d? | 2008-12-05 | 2008-12-09 |  |  |  | 2008-12-05 | 2008-12-07 | 0.71d? | 3.05d |  |  | Equipe [600%] | 40h |
| 20 | 1.2.1.2 | Rapport planification - encadreur | milestone | 0d | 2008-12-15 | 2008-12-15 |  |  |  | 2008-12-15 | 2008-12-15 | 0d | 0d |  | must start on 2008-12-15 |  |  |
| 21 | 1.2.1.3 | Rapport planification - rapporteur | milestone | 0d | 2008-12-17 | 2008-12-17 | 19 |  |  | 2008-12-17 | 2008-12-17 | 0d | 0d |  | must start on 2008-12-17 |  |  |
| 22 | 1.2.2 | **Conception logicielle** |  | 11.43d? | 2009-01-06 | 2009-02-13 | 20 |  |  | 2009-01-06 | 2009-02-13 | 11.43d? | 0d |  | as late as possible |  | 540h |
| 23 | 1.2.2.1 | **Conception** |  | 11.43d? | 2009-01-06 | 2009-02-12 |  |  |  | 2009-01-06 | 2009-02-12 | 11.43d? | 4.57d | 0d | as late as possible |  | 540h |
| 24 | 1.2.2.1.1 | Architecture générale |  | 2.14d? | 2009-01-06 | 2009-01-17 |  |  |  | 2009-01-06 | 2009-01-17 | 2.14d? | 4.57d | 0d | as late as possible | Equipe [400%] | 60h |

| ID | WBS | Task | Type | Duration | Start | Finish | Predecessors | Baseline start | Baseline finish | Baseline duration | Total slack | Free slack | Constraint | Resources | Work |
| --- | --- | --- | --- | --- | --- | --- | --- | --- | --- | --- | --- | --- | --- | --- | --- |
| 25 | 1.2.2.1.2 | **Architecture détaillée** |  | 9.29d? | 2009-01-17 | 2009-02-12 | 24 | 2009-01-17 | 2009-02-12 | 9.29d? | 4.57d | 0d | as late as possible |  | 480h |
| 26 | 1.2.2.1.2.1 | Interface graphique (générale) |  | 7.14d? | 2009-01-23 | 2009-02-12 |  | 2009-01-23 | 2009-02-12 | 7.14d? | 6.71d | 0d | as late as possible | Equipe [200%] | 100h |
| 27 | 1.2.2.1.2.2 | Widget de dessin |  | 9.29d? | 2009-01-17 | 2009-02-12 |  | 2009-01-17 | 2009-02-12 | 9.29d? | 4.57d | 0d | as late as possible | Equipe [400%] | 260h |
| 28 | 1.2.2.1.2.3 | COMSOL |  | 8.57d? | 2009-01-18 | 2009-02-12 |  | 2009-01-18 | 2009-02-12 | 8.57d? | 5.29d | 0d | as late as possible | Equipe [200%] | 120h |
| 29 | 1.2.2.2 | Rapport conception - encadreur | milestone | 0d | 2009-02-06 | 2009-02-06 |  | 2009-02-06 | 2009-02-06 | 0d | 0d |  | start no later than 2009-02-06 |  |  |
| 30 | 1.2.2.3 | Rapport conception - rapporteur | milestone | 0d | 2009-02-13 | 2009-02-13 | 28, 27, 26 | 2009-02-13 | 2009-02-13 | 0d | 0d |  | finish no later than 2009-02-13 |  |  |
| 31 | 1.3 | **Construction** |  | 30d? | 2009-02-23 | 2009-05-24 | 30 | 2009-02-23 | 2009-05-24 | 30d? | 0.86d | 0d | as late as possible |  | 860h |
| 32 | 1.3.1 | **Développements** |  | 28.57d? | 2009-02-23 | 2009-05-22 |  | 2009-02-23 | 2009-05-22 | 28.57d? | 0.86d | 0d | as late as possible |  | 820h |
| 33 | 1.3.1.1 | Interface graphique (générale) |  | 8.57d? | 2009-03-15 | 2009-04-16 |  | 2009-03-15 | 2009-04-16 | 8.57d? | 6d | 0d | as late as possible | Equipe [200%] | 120h |
| 34 | 1.3.1.2 | Widget de dessin |  | 14.29d? | 2009-04-17 | 2009-05-22 | 33 | 2009-04-17 | 2009-05-22 | 14.29d? | 6d | 0d | as late as possible | Equipe [400%] | 400h |
| 35 | 1.3.1.3 | **COMSOL** |  | 28.57d? | 2009-02-23 | 2009-05-22 |  | 2009-02-23 | 2009-05-22 | 28.57d? | 0.86d | 0d | as late as possible |  | 300h |
| 36 | 1.3.1.3.1 | Scripts |  | 14.29d? | 2009-02-23 | 2009-04-16 |  | 2009-02-23 | 2009-04-16 | 14.29d? | 0.29d | 0d | as late as possible | Equipe [200%] | 200h |
| 37 | 1.3.1.3.2 | Traitement des résultats |  | 14.29d? | 2009-04-17 | 2009-05-22 | 36 | 2009-04-17 | 2009-05-22 | 14.29d? | 0.29d | 0d | as late as possible | Equipe | 100h |
| 38 | 1.3.2 | **Tests** |  | 1.43d? | 2009-05-22 | 2009-05-24 |  | 2009-05-22 | 2009-05-24 | 1.43d? | 0.86d | 0d | as late as possible |  | 40h |
| 39 | 1.3.2.1 | Test d'intégration |  | 1.43d? | 2009-05-22 | 2009-05-24 | 32 | 2009-05-22 | 2009-05-24 | 1.43d? | 0.86d | 0d | as late as possible | Equipe [400%] | 40h |
| 40 | 1.3.3 | Page HTML - encadreur | milestone | 0d | 2009-03-27 | 2009-03-27 |  | 2009-03-27 | 2009-03-27 | 0d | 0d |  | must start on 2009-03-27 |  |  |
| 41 | 1.3.4 | Page HTML - rapporteur | milestone | 0d | 2009-04-03 | 2009-04-03 |  | 2009-04-03 | 2009-04-03 | 0d | 0d |  | must start on 2009-04-03 |  |  |
| 42 | 1.4 | **Livraison** |  | 4d? | 2009-05-25 | 2009-05-28 | 31 | 2009-05-25 | 2009-05-28 | 4d? | 0d |  | as late as possible |  | 10h |
| 43 | 1.4.1 | Démonstrations | milestone | 0d | 2009-05-28 | 2009-05-28 |  | 2009-05-28 | 2009-05-28 | 0d | 0d |  | start no later than 2009-05-28 |  |  |
| 44 | 1.4.2 | CD-ROM |  | 0.71d? | 2009-05-25 | 2009-05-25 |  | 2009-05-25 | 2009-05-25 | 0.71d? | 0.29d | 0d | finish no later than 2009-05-25 | Equipe [200%] | 10h |
| 45 | 1.4.3 | Page Finale - encadreur | milestone | 0d | 2009-05-25 | 2009-05-25 |  | 2009-05-25 | 2009-05-25 | 0d | 0d |  | start no later than 2009-05-25 |  |  |
| 46 | 1.4.4 | Page Finale - encadreur | milestone | 0d | 2009-05-26 | 2009-05-26 |  | 2009-05-26 | 2009-05-26 | 0d | 0d |  | start no later than 2009-05-26 |  |  |
| 47 | 1.5 | **Soutenances** |  | 48d? | 2008-12-17 | 2009-05-29 |  | 2008-12-17 | 2009-05-29 | 48d? | 0d |  | as late as possible |  | 68h |
| 48 | 1.5.1 | **Spécifications** |  | 1.14d? | 2008-12-17 | 2008-12-19 |  | 2008-12-17 | 2008-12-19 | 1.14d? | 0d |  | as late as possible |  | 26h |
| 49 | 1.5.1.1 | Préparation |  | 1d? | 2008-12-17 | 2008-12-18 |  | 2008-12-17 | 2008-12-18 | 1d? | 25d | 0d | finish no later than 2008-12-19 |  | 20h |
| 50 | 1.5.1.2 | Répétition |  | 0.14d? | 2008-12-18 | 2008-12-18 | 49 | 2008-12-18 | 2008-12-18 | 0.14d? | 25d | 0d | finish no later than 2008-12-18 | Equipe [600%] | 6h |
| 51 | 1.5.1.3 | Soutenance orale | milestone | 0h | 2008-12-19 | 2008-12-19 | 50 | 2008-12-19 | 2008-12-19 | 0h | 0d |  | must start on 2008-12-19 |  |  |

| ID | WBS | Task | Type | Duration | Start | Finish | Predecessors | Baseline start | Baseline finish | Baseline duration | Total slack | Free slack | Constraint | Resources | Work |
| --- | --- | --- | --- | --- | --- | --- | --- | --- | --- | --- | --- | --- | --- | --- | --- |
| 52 | 1.5.2 | **Planification** |  | 0.57d? | 2008-12-18 | 2008-12-19 |  | 2008-12-18 | 2008-12-19 | 0.57d? | 0d |  | as late as possible |  | 12h |
| 53 | 1.5.2.1 | Préparation |  | 0.43d? | 2008-12-18 | 2008-12-18 |  | 2008-12-18 | 2008-12-18 | 0.43d? | 25.57d | 0d | finish no later than 2008-12-18 | Equipe [300%] | 9h |
| 54 | 1.5.2.2 | Répétition |  | 0.14d? | 2008-12-18 | 2008-12-18 | 53 | 2008-12-18 | 2008-12-18 | 0.14d? | 25.57d | 0d | finish no later than 2008-12-18 | Equipe [300%] | 3h |
| 55 | 1.5.2.3 | Soutenance orale | milestone | 0h | 2008-12-19 | 2008-12-19 | 54 | 2008-12-19 | 2008-12-19 | 0h | 0d |  | must start on 2008-12-19 |  |  |
| 56 | 1.5.3 | **Finale** |  | 0.71d? | 2009-05-28 | 2009-05-29 |  | 2009-05-28 | 2009-05-29 | 0.71d? | 0d |  | as late as possible |  | 30h |
| 57 | 1.5.3.1 | Préparation |  | 0.57d? | 2009-05-28 | 2009-05-28 |  | 2009-05-28 | 2009-05-28 | 0.57d? | 72.29d | 0d | finish no later than 2009-05-28 | Equipe [600%] | 24h |
| 58 | 1.5.3.2 | Répétition |  | 0.14d? | 2009-05-28 | 2009-05-28 | 57 | 2009-05-28 | 2009-05-28 | 0.14d? | 72.29d | 0d | finish no later than 2009-05-28 | Equipe [600%] | 6h |
| 59 | 1.5.3.3 | Soutenance orale | milestone | 0h | 2009-05-29 | 2009-05-29 | 58 | 2009-05-29 | 2009-05-29 | 0h | 0d |  | must start on 2009-05-29 |  |  |
